# basic_one_task_test

Schedule from MS Project, 2017-05-31 to 2017-07-03.

## Calendars

- Standard: Mon-Fri 08:00-12:00, 13:00-17:00; Sat-Sun off.

## Resources

| Resource |
| --- |
| 郭茜 |
| 王琛 |
| 白凯 |
| 赵一鸣 |
| 虞里杉 |
| 袁伟明 |
| 刘旭 |
| 袁伟明 |
| 柴宗三 |
| 江彤 |
| 敬晓阳 |
| 张宁 |
| 贾双喜 |
| 罗丹丹 |
| 于晶 |
| 张富强 |
| 闫林生 |
| 赵星云 |
| 柴宗三 |
| 王栋 |

## Schedule

| ID | WBS | Task | Type | Duration | Start | Finish | Predecessors | Total slack | Constraint | Resources | Work |
| --- | --- | --- | --- | --- | --- | --- | --- | --- | --- | --- | --- |
| 183 | 1 | **按实例获取资源使用信息REST API** |  | 5d | 2017-06-25 | 2017-06-30 | 182 | 0d | start no earlier than 2017-06-09 | 赵星云 | 40h |
| 182 | 1.1 | RabbitMQ按实例收集资源使用信息 |  | 5d | 2017-06-18 | 2017-06-23 | 181 | 0d | start no earlier than 2017-06-09 | 赵星云 | 40h |
| 181 | 1.2 | Neo4j按实例收集资源使用信息 |  | 5d | 2017-06-11 | 2017-06-16 |  | 0d | start no earlier than 2017-06-09 | 赵星云 | 40h |
| 180 | 1.3 | MongoDB按实例收集资源使用信息 |  | 8d | 2017-06-21 | 2017-07-03 | 179 | 0d | start no earlier than 2017-06-09 | 闫林生 | 64h |
| 179 | 1.4 | GreenPlum按实例收集资源使用信息 |  | 8d | 2017-06-11 | 2017-06-21 |  | 0d | start no earlier than 2017-06-09 | 闫林生 | 64h |
| 178 | 1.5 | Kafka按实例收集资源使用信息 |  | 3d | 2017-06-27 | 2017-06-30 | 177 | 0d | start no earlier than 2017-06-09 | 闫林生 | 24h |
| 177 | 1.6 | HIve按实例收集资源使用信息 |  | 3d | 2017-06-22 | 2017-06-27 | 176 | 0d | start no earlier than 2017-06-09 | 赵星云 | 24h |
| 176 | 1.7 | HBase按实例收集资源使用信息 |  | 3d | 2017-06-19 | 2017-06-22 | 175 | 0d | start no earlier than 2017-06-09 | 张富强 | 24h |
| 175 | 1.8 | YARN按实例收集资源使用信息 |  | 3d | 2017-06-14 | 2017-06-19 | 174 | 0d | start no earlier than 2017-06-09 | 张富强 | 24h |
| 174 | 1.9 | HDFS按实例收集资源使用信息 |  | 3d | 2017-06-11 | 2017-06-14 |  | 0d | start no earlier than 2017-06-09 | 张富强 | 24h |
| 173 | 2 | 资源监控数据收集框架开发 |  | 16d | 2017-06-11 | 2017-07-03 |  | 0d | start no earlier than 2017-06-09 |  | 368h |
| 172 | 3 | **Service Broker重构** |  | 15d | 2017-06-07 | 2017-06-28 |  | 0d | start no earlier than 2017-06-07 | 柴宗三 | 120h |
| 171 | 3.1 | 项目沟通协调 | milestone | 0d | 2017-06-06 | 2017-06-06 |  | 0d | start no earlier than 2017-06-06 | 王栋 |  |
| 170 | 3.2 | **工作计划编写** |  | 5d | 2017-06-06 | 2017-06-13 |  | 0d | start no earlier than 2017-06-06 | 王栋 | 40h |
| 169 | 3.2.1 | 实现方案论证 |  | 5d | 2017-06-06 | 2017-06-13 |  | 0d | start no earlier than 2017-06-06 | 王栋 | 40h |
| 168 | 3.2.2 | 前端页面原型开发 |  | 15d | 2017-06-06 | 2017-06-27 |  | 0d | start no earlier than 2017-06-06 | 王栋 | 120h |
| 167 | 3.2.3 | 架构设计 |  | 4d | 2017-06-06 | 2017-06-12 |  | 0d | start no earlier than 2017-06-06 | 王栋 | 32h |
| 166 | 3.2.4 | 租户模型设计 |  | 4d | 2017-06-06 | 2017-06-12 |  | 0d | start no earlier than 2017-06-06 | 王栋 | 32h |
| 165 | 3.3 | **架构设计** |  | 15d | 2017-06-06 | 2017-06-27 |  | 0d | start no earlier than 2017-06-06 |  | 224h |
| 164 | 3.3.1 | 需求讨论，分析 |  | 3d | 2017-06-06 | 2017-06-09 |  | 0d | start no earlier than 2017-06-06 | 王栋 | 24h |
| 163 | 3.3.2 | 客户需求理解，前期准备 |  | 4d | 2017-06-06 | 2017-06-12 |  | 0d | start no earlier than 2017-06-06 | 王栋 | 32h |
| 162 | 3.4 | 需求分析 |  | 4d | 2017-06-06 | 2017-06-12 |  | 0d | start no earlier than 2017-06-06 |  | 56h |
| 161 | 4 | **其它** |  | 15d | 2017-06-06 | 2017-06-27 |  | 0d | start no earlier than 2017-06-06 |  | 320h |
| 160 | 4.1 | **授权完成触发邮件发送** |  | 2d | 2017-06-12 | 2017-06-14 | 159 | 0d | start no earlier than 2017-06-06 | 罗丹丹 | 16h |
| 159 | 4.1.1 | 发送邮件功能开发，启动一个线程后台运行 |  | 3d | 2017-06-07 | 2017-06-12 | 158 | 0d | start no earlier than 2017-06-06 | 罗丹丹 | 24h |
| 158 | 4.1.2 | 配置邮件服务器信息，后台配置 |  | 1d | 2017-06-06 | 2017-06-07 |  | 0d | start no earlier than 2017-06-06 | 罗丹丹 | 8h |

| ID | WBS | Task | Type | Duration | Start | Finish | Predecessors | Baseline start | Baseline finish | Baseline duration | Total slack | Constraint | Resources | Work |
| --- | --- | --- | --- | --- | --- | --- | --- | --- | --- | --- | --- | --- | --- | --- |
| 157 | 4.2 | **用户授权完成发邮件** |  | 6d | 2017-06-06 | 2017-06-14 | 154 |  |  |  | 0d | start no earlier than 2017-06-05 |  | 48h |
| 156 | 4.2.1 | 中信云中嵌入资源报告页面 | milestone | 0d | 2017-06-06 | 2017-06-06 | 155 |  |  |  | 0d | start no earlier than 2017-06-06 |  |  |
| 155 | 4.2.2 | 资源报告页面可定制化，根据服务实例ID来动态展示 | milestone | 0d | 2017-06-06 | 2017-06-06 |  |  |  |  | 0d | start no earlier than 2017-06-06 |  |  |
| 154 | 4.3 | 中信云访问资源报告页面 | milestone | 0d | 2017-06-06 | 2017-06-06 |  |  |  |  | 0d | start no earlier than 2017-06-05 |  |  |
| 153 | 4.4 | 集团资源报告 |  | 3d | 2017-06-22 | 2017-06-27 | 152 |  |  |  | 0d | start no earlier than 2017-06-06 |  | 24h |
| 152 | 4.5 | 子公司资源报告 |  | 3d | 2017-06-19 | 2017-06-22 | 151 |  |  |  | 0d | start no earlier than 2017-06-06 |  | 24h |
| 151 | 4.6 | 用户添加 |  | 4d | 2017-06-13 | 2017-06-19 | 150 |  |  |  | 0d | start no earlier than 2017-06-06 |  | 32h |
| 150 | 4.7 | 用户列表页面 |  | 5d | 2017-06-06 | 2017-06-13 |  |  |  |  | 0d | start no earlier than 2017-06-06 |  | 40h |
| 149 | 4.8 | 子公司用户权限控制 |  | 3d | 2017-06-06 | 2017-06-09 |  |  |  |  | 0d | start no earlier than 2017-06-06 |  | 24h |
| 148 | 5 | **需求变更任务** |  | 15d | 2017-06-06 | 2017-06-27 |  |  |  |  | 0d | start no earlier than 2017-06-05 |  | 192h |
| 147 | 5.1 | **REST API实现** |  | 3d | 2017-06-25 | 2017-06-28 | 146 |  |  |  | 0d | start no earlier than 2017-05-25 | 赵一鸣 | 24h |
| 146 | 5.1.1 | REST API接口设计 |  | 2d | 2017-06-21 | 2017-06-23 |  |  |  |  | 0d | start no earlier than 2017-05-25 | 赵一鸣 | 16h |
| 145 | 5.2 | **提供REST API供信云智修改租户** |  | 5d | 2017-06-21 | 2017-06-28 | 132, 142 | 2017-06-07 | 2017-06-14 | 5d | 0d | start no earlier than 2017-05-24 |  | 40h |
| 144 | 5.2.1 | REST API实现 |  | 3d | 2017-06-18 | 2017-06-21 | 143 |  |  |  | 0d | start no earlier than 2017-05-25 | 赵一鸣 | 24h |
| 143 | 5.2.2 | REST API接口设计 |  | 2d | 2017-06-14 | 2017-06-16 |  |  |  |  | 0d | start no earlier than 2017-05-25 | 赵一鸣 | 16h |
| 142 | 5.3 | **提供REST API供信云智查询租户** |  | 5d | 2017-06-14 | 2017-06-21 | 139 |  |  |  | 0d | start no earlier than 2017-05-25 |  | 40h |
| 141 | 5.3.1 | REST API实现 |  | 3d | 2017-06-11 | 2017-06-14 | 140 |  |  |  | 0d | start no earlier than 2017-05-25 | 赵一鸣 | 24h |
| 140 | 5.3.2 | REST API接口设计 |  | 2d | 2017-06-07 | 2017-06-09 |  |  |  |  | 0d | start no earlier than 2017-05-25 | 赵一鸣 | 16h |
| 139 | 5.4 | **提供REST API供信云智创建租户** |  | 5d | 2017-06-07 | 2017-06-14 | 136 | 2017-06-07 | 2017-06-21 | 10d | 0d | start no earlier than 2017-05-24 |  | 40h |
| 138 | 5.4.1 | REST API实现 |  | 3d | 2017-06-04 | 2017-06-07 | 137 |  |  |  | 0d | start no earlier than 2017-05-25 | 赵一鸣 | 24h |
| 137 | 5.4.2 | REST API接口设计 |  | 2d | 2017-05-31 | 2017-06-02 |  |  |  |  | 0d | start no earlier than 2017-05-25 | 赵一鸣 | 16h |
| 136 | 5.5 | 提供REST API供信云智调用来获取服务列表 |  | 5d | 2017-05-31 | 2017-06-07 |  | 2017-05-31 | 2017-06-07 | 5d | 0d | start no earlier than 2017-05-24 |  | 40h |
| 135 | 6 | **与信云智交互过程开发** |  | 20d | 2017-05-31 | 2017-06-28 |  | 2017-05-31 | 2017-06-21 | 15d | 0d | start no earlier than 2017-05-31 |  | 160h |
| 134 | 6.1 | DACP接口调用 |  | 4d | 2017-06-01 | 2017-06-07 | 133 |  |  |  | 0d | start no earlier than 2017-05-25 | 于晶 | 32h |
| 133 | 6.2 | 与DACP调用接口沟通 |  | 1d | 2017-05-31 | 2017-06-01 |  |  |  |  | 0d | start no earlier than 2017-05-25 | 于晶 | 8h |

| ID | WBS | Task | Duration | Start | Finish | Predecessors | Baseline start | Baseline finish | Baseline duration | Total slack | Constraint | Resources | Work |
| --- | --- | --- | --- | --- | --- | --- | --- | --- | --- | --- | --- | --- | --- |
| 132 | 7 | **与DACP调用接口开发** | 5d | 2017-05-31 | 2017-06-07 |  | 2017-05-31 | 2017-06-07 | 5d | 0d | start no earlier than 2017-05-31 |  | 40h |
| 131 | 7.1 | **RabbitMQ服务功能集成** | 2d | 2017-06-26 | 2017-06-28 | 130 |  |  |  | 0d | start no earlier than 2017-05-25 | 刘旭 | 16h |
| 130 | 7.1.1 | RabbitMQ服务RSET API实现 | 2d | 2017-06-22 | 2017-06-26 | 129 |  |  |  | 0d | start no earlier than 2017-05-25 | 刘旭 | 16h |
| 129 | 7.1.2 | RabbitMQ服务实例功能开发 | 4d | 2017-06-18 | 2017-06-22 | 128 |  |  |  | 0d | start no earlier than 2017-05-25 | 刘旭 | 32h |
| 128 | 7.1.3 | RabbitMQ服务功能开发 | 4d | 2017-06-12 | 2017-06-16 | 127 |  |  |  | 0d | start no earlier than 2017-05-25 | 刘旭 | 32h |
| 127 | 7.1.4 | RabbitMQ服务实例功能调研 | 4d | 2017-06-06 | 2017-06-12 | 126 |  |  |  | 0d | start no earlier than 2017-05-25 | 刘旭 | 32h |
| 126 | 7.1.5 | RabbitMQ服务功能调研 | 4d | 2017-05-31 | 2017-06-06 |  |  |  |  | 0d | start no earlier than 2017-05-25 | 刘旭 | 32h |
| 125 | 7.2 | **RabbitMQ服务及服务实例开发** | 20d | 2017-05-31 | 2017-06-28 |  | 2017-05-31 | 2017-06-28 | 20d | 0d | start no earlier than 2017-05-31 |  | 160h |
| 124 | 7.2.1 | Neo4j服务功能集成 | 2d | 2017-06-26 | 2017-06-28 | 123 |  |  |  | 0d | start no earlier than 2017-05-25 | 袁伟明 | 16h |
| 123 | 7.2.2 | Neo4j服务REST API实现 | 2d | 2017-06-22 | 2017-06-26 | 122 |  |  |  | 0d | start no earlier than 2017-05-25 | 袁伟明 | 16h |
| 122 | 7.2.3 | Neo4j服务实例功能开发 | 4d | 2017-06-18 | 2017-06-22 | 121 |  |  |  | 0d | start no earlier than 2017-05-25 | 袁伟明 | 32h |
| 121 | 7.2.4 | Neo4j服务功能开发 | 4d | 2017-06-12 | 2017-06-16 | 120 |  |  |  | 0d | start no earlier than 2017-05-25 | 袁伟明 | 32h |
| 120 | 7.2.5 | Neo4j服务实例功能调研 | 4d | 2017-06-06 | 2017-06-12 | 119 |  |  |  | 0d | start no earlier than 2017-05-25 | 袁伟明 | 32h |
| 119 | 7.2.6 | Neo4j服务功能调研 | 4d | 2017-05-31 | 2017-06-06 |  |  |  |  | 0d | start no earlier than 2017-05-25 | 袁伟明 | 32h |
| 118 | 7.3 | **Neo4j服务及服务实例开发** | 20d | 2017-05-31 | 2017-06-28 |  | 2017-05-31 | 2017-06-28 | 20d | 0d | start no earlier than 2017-05-31 |  | 160h |
| 117 | 7.3.1 | MongoDB服务功能集成 | 2d | 2017-06-26 | 2017-06-28 | 116 |  |  |  | 0d | start no earlier than 2017-05-25 | 柴宗三 | 16h |
| 116 | 7.3.2 | MongoDB服务REST API实现 | 2d | 2017-06-22 | 2017-06-26 | 115 |  |  |  | 0d | start no earlier than 2017-05-25 | 柴宗三 | 16h |
| 115 | 7.3.3 | MongoDB服务实例功能开发 | 4d | 2017-06-18 | 2017-06-22 | 114 |  |  |  | 0d | start no earlier than 2017-05-25 | 柴宗三 | 32h |
| 114 | 7.3.4 | MongoDB服务功能开发 | 4d | 2017-06-12 | 2017-06-16 | 113 |  |  |  | 0d | start no earlier than 2017-05-25 | 柴宗三 | 32h |
| 113 | 7.3.5 | MongoDB服务实例功能调研 | 4d | 2017-06-06 | 2017-06-12 | 112 |  |  |  | 0d | start no earlier than 2017-05-25 | 柴宗三 | 32h |
| 112 | 7.3.6 | MongoDB服务功能调研 | 4d | 2017-05-31 | 2017-06-06 |  |  |  |  | 0d | start no earlier than 2017-05-25 | 柴宗三 | 32h |
| 111 | 7.4 | **MongoDB服务及服务实例开发** | 20d | 2017-05-31 | 2017-06-28 |  | 2017-05-31 | 2017-06-28 | 20d | 0d | start no earlier than 2017-05-31 |  | 160h |
| 110 | 7.4.1 | GreenPlum服务功能集成 | 2d | 2017-06-26 | 2017-06-28 | 109 |  |  |  | 0d | start no earlier than 2017-05-25 | 袁伟明 | 16h |
| 109 | 7.4.2 | GreenPlum 服务REST API实现 | 2d | 2017-06-22 | 2017-06-26 | 108 |  |  |  | 0d | start no earlier than 2017-05-25 | 袁伟明 | 16h |
| 108 | 7.4.3 | GreenPlum 服务实例功能开发 | 4d | 2017-06-18 | 2017-06-22 | 107 |  |  |  | 0d | start no earlier than 2017-05-25 | 袁伟明 | 32h |
| 107 | 7.4.4 | GreenPlum服务功能开发 | 4d | 2017-06-12 | 2017-06-16 | 106 |  |  |  | 0d | start no earlier than 2017-05-25 | 袁伟明 | 32h |
| 106 | 7.4.5 | GreenPlum 服务实例功能调研 | 4d | 2017-06-06 | 2017-06-12 | 105 |  |  |  | 0d | start no earlier than 2017-05-25 | 袁伟明 | 32h |
| 105 | 7.4.6 | GreenPlum服务功能调研 | 4d | 2017-05-31 | 2017-06-06 |  |  |  |  | 0d | start no earlier than 2017-05-25 | 袁伟明 | 32h |

| ID | WBS | Task | Type | Duration | Start | Finish | Predecessors | Baseline start | Baseline finish | Baseline duration | Total slack | Constraint | Resources | Work |
| --- | --- | --- | --- | --- | --- | --- | --- | --- | --- | --- | --- | --- | --- | --- |
| 104 | 7.5 | **GreenPlum 服务及服务实例开发** |  | 20d | 2017-05-31 | 2017-06-28 |  | 2017-05-31 | 2017-06-28 | 20d | 0d | start no earlier than 2017-05-31 |  | 160h |
| 103 | 7.5.1 | Oracle服务功能集成 | milestone | 0d | 2017-05-31 | 2017-05-31 | 102 |  |  |  | 0d | start no earlier than 2017-05-25 |  |  |
| 102 | 7.5.2 | Oracle服务REST API实现 | milestone | 0d | 2017-05-31 | 2017-05-31 | 101 |  |  |  | 0d | start no earlier than 2017-05-25 |  |  |
| 101 | 7.5.3 | Oracle服务实例功能开发 | milestone | 0d | 2017-05-31 | 2017-05-31 | 100 |  |  |  | 0d | start no earlier than 2017-05-25 |  |  |
| 100 | 7.5.4 | Oracle服务功能开发 | milestone | 0d | 2017-05-31 | 2017-05-31 | 99 |  |  |  | 0d | start no earlier than 2017-05-25 |  |  |
| 99 | 7.5.5 | Oracle服务实例功能调研 | milestone | 0d | 2017-05-31 | 2017-05-31 | 98 |  |  |  | 0d | start no earlier than 2017-05-25 |  |  |
| 98 | 7.5.6 | Oracle服务功能调研 | milestone | 0d | 2017-05-31 | 2017-05-31 |  |  |  |  | 0d | start no earlier than 2017-05-25 |  |  |
| 97 | 7.6 | **Oracle服务及服务实例开发** |  | 0d | 2017-05-31 | 2017-05-31 |  | 2017-05-31 | 2017-06-28 | 20d | 0d | start no earlier than 2017-05-31 |  |  |
| 96 | 7.6.1 | Kafka服务REST API实现 |  | 2d | 2017-06-26 | 2017-06-28 | 95 |  |  |  | 0d | start no earlier than 2017-05-25 | 白凯 | 16h |
| 95 | 7.6.2 | Kafka服务实例功能开发 |  | 4d | 2017-06-20 | 2017-06-26 | 94 |  |  |  | 0d | start no earlier than 2017-05-25 | 白凯 | 32h |
| 94 | 7.6.3 | Kafka服务功能开发 |  | 4d | 2017-06-14 | 2017-06-20 |  |  |  |  | 0d | start no earlier than 2017-05-25 | 白凯 | 32h |
| 93 | 7.7 | **Kafka服务及服务实例开发** |  | 10d | 2017-06-14 | 2017-06-28 | 55 | 2017-06-14 | 2017-06-28 | 10d | 0d | start no earlier than 2017-05-31 |  | 80h |
| 92 | 7.7.1 | Hive服务REST API实现 |  | 2d | 2017-06-26 | 2017-06-28 | 91 |  |  |  | 0d | start no earlier than 2017-05-25 | 王琛 | 16h |
| 91 | 7.7.2 | Hive服务实例功能开发 |  | 4d | 2017-06-20 | 2017-06-26 | 90 |  |  |  | 0d | start no earlier than 2017-05-25 | 王琛 | 32h |
| 90 | 7.7.3 | Hive服务功能开发 |  | 4d | 2017-06-14 | 2017-06-20 |  |  |  |  | 0d | start no earlier than 2017-05-25 | 王琛 | 32h |
| 89 | 7.8 | **Hive服务及服务实例开发** |  | 10d | 2017-06-14 | 2017-06-28 | 85 | 2017-06-14 | 2017-06-28 | 10d | 0d | start no earlier than 2017-05-31 |  | 80h |
| 88 | 7.8.1 | HBase服务REST API开发 |  | 2d | 2017-06-12 | 2017-06-14 | 87 |  |  |  | 0d | start no earlier than 2017-05-25 | 王琛 | 16h |
| 87 | 7.8.2 | HBase服务实例功能开发 |  | 4d | 2017-06-06 | 2017-06-12 | 86 |  |  |  | 0d | start no earlier than 2017-05-25 | 王琛 | 32h |
| 86 | 7.8.3 | HBase服务功能开发 |  | 4d | 2017-05-31 | 2017-06-06 |  |  |  |  | 0d | start no earlier than 2017-05-25 | 王琛 | 32h |
| 85 | 7.9 | **HBase服务及服务实例开发** |  | 10d | 2017-05-31 | 2017-06-14 |  | 2017-05-31 | 2017-06-14 | 10d | 0d | start no earlier than 2017-05-31 |  | 80h |
| 84 | 7.9.1 | YARN服务REST API实现 |  | 2d | 2017-06-26 | 2017-06-28 | 83 |  |  |  | 0d | start no earlier than 2017-05-25 | 郭茜 | 16h |
| 83 | 7.9.2 | YARN服务实例功能开发 |  | 4d | 2017-06-20 | 2017-06-26 | 82 |  |  |  | 0d | start no earlier than 2017-05-25 | 郭茜 | 32h |
| 82 | 7.9.3 | YARN服务功能开发 |  | 4d | 2017-06-14 | 2017-06-20 |  |  |  |  | 0d | start no earlier than 2017-05-25 | 郭茜 | 32h |
| 81 | 7.10 | **YARN服务及服务实例开发** |  | 10d | 2017-06-14 | 2017-06-28 | 77 | 2017-06-14 | 2017-06-28 | 10d | 0d | start no earlier than 2017-05-31 |  | 80h |
| 80 | 7.10.1 | HDFS服务REST API实现 |  | 2d | 2017-06-12 | 2017-06-14 | 79 |  |  |  | 0d | start no earlier than 2017-05-25 | 郭茜 | 16h |
| 79 | 7.10.2 | HDFS服务实例功能开发 |  | 4d | 2017-06-06 | 2017-06-12 | 78 |  |  |  | 0d | start no earlier than 2017-05-25 | 郭茜 | 32h |
| 78 | 7.10.3 | HDFS服务功能开发 |  | 4d | 2017-05-31 | 2017-06-06 |  |  |  |  | 0d | start no earlier than 2017-05-25 | 郭茜 | 32h |
| 77 | 7.11 | HDFS服务及服务实例开发 |  | 10d | 2017-05-31 | 2017-06-14 |  | 2017-05-31 | 2017-06-14 | 10d | 0d | start no earlier than 2017-05-31 |  | 80h |

| ID | WBS | Task | Duration | Start | Finish | Predecessors | Baseline start | Baseline finish | Baseline duration | Total slack | Constraint | Resources | Work |
| --- | --- | --- | --- | --- | --- | --- | --- | --- | --- | --- | --- | --- | --- |
| 76 | 8 | **服务适配器开发** | 20d | 2017-05-31 | 2017-06-28 |  | 2017-05-31 | 2017-06-28 | 20d | 0d |  |  | 1040h |
| 75 | 8.1 | **服务端代码组织结构设计** | 3d | 2017-06-21 | 2017-06-26 | 74 |  |  |  | 0d | start no earlier than 2017-05-25 | 虞里杉 | 24h |
| 74 | 8.1.1 | 服务端开发框架准备 | 4d | 2017-06-15 | 2017-06-21 | 73 |  |  |  | 0d | start no earlier than 2017-05-25 | 虞里杉 | 32h |
| 73 | 8.1.2 | 服务端Web服务器准备 | 3d | 2017-06-12 | 2017-06-15 |  |  |  |  | 0d | start no earlier than 2017-05-25 | 虞里杉 | 24h |
| 72 | 8.2 | **服务端配置管理，框架开发** | 10d | 2017-06-12 | 2017-06-26 | 7 | 2017-06-14 | 2017-06-28 | 10d | 0d | start no earlier than 2017-05-24 |  | 80h |
| 71 | 8.2.1 | 租户删除 | 4d | 2017-06-06 | 2017-06-12 |  |  |  |  | 0d | start no earlier than 2017-06-06 |  | 32h |
| 70 | 8.2.2 | 租户修改 | 4d | 2017-06-15 | 2017-06-21 | 69 |  |  |  | 0d | start no earlier than 2017-05-25 | 赵一鸣 | 32h |
| 69 | 8.2.3 | 租户创建 | 4d | 2017-06-11 | 2017-06-15 | 68 |  |  |  | 0d | start no earlier than 2017-05-25 | 赵一鸣 | 32h |
| 68 | 8.2.4 | 租户查询 | 1d | 2017-06-08 | 2017-06-09 | 67 |  |  |  | 0d | start no earlier than 2017-05-25 | 赵一鸣 | 8h |
| 67 | 8.2.5 | 租户接口实现 | 3d | 2017-06-05 | 2017-06-08 | 66 |  |  |  | 0d | start no earlier than 2017-05-25 | 赵一鸣 | 24h |
| 66 | 8.2.6 | 租户接口设计 | 3d | 2017-05-31 | 2017-06-05 |  |  |  |  | 0d | start no earlier than 2017-05-25 | 赵一鸣 | 24h |
| 65 | 8.3 | **租户管理功能开发** | 15d | 2017-05-31 | 2017-06-21 |  | 2017-05-31 | 2017-06-21 | 15d | 0d | start no earlier than 2017-05-24 |  | 152h |
| 64 | 8.3.1 | 普通用户权限控制功能开发 | 2d | 2017-06-12 | 2017-06-14 | 63 |  |  |  | 0d | start no earlier than 2017-05-25 | 虞里杉 | 16h |
| 63 | 8.3.2 | 项目管理员权限控制功能开发 | 2d | 2017-06-08 | 2017-06-12 | 62 |  |  |  | 0d | start no earlier than 2017-05-25 | 虞里杉 | 16h |
| 62 | 8.3.3 | 系统管理员权限控制功能开发 | 3d | 2017-06-05 | 2017-06-08 | 61 |  |  |  | 0d | start no earlier than 2017-05-25 | 虞里杉 | 24h |
| 61 | 8.3.4 | 四种角色控制框架设计 | 3d | 2017-05-31 | 2017-06-05 |  |  |  |  | 0d | start no earlier than 2017-05-25 | 虞里杉 | 24h |
| 60 | 8.4 | **权限管理功能开发** | 10d | 2017-05-31 | 2017-06-14 |  | 2017-06-14 | 2017-06-28 | 10d | 0d | start no earlier than 2017-05-24 |  | 80h |
| 59 | 8.4.1 | 服务实例管理功能开发 | 4d | 2017-06-08 | 2017-06-14 | 58 |  |  |  | 0d | start no earlier than 2017-05-25 | 白凯 | 32h |
| 58 | 8.4.2 | 服务管理功能开发 | 3d | 2017-06-05 | 2017-06-08 | 57 |  |  |  | 0d | start no earlier than 2017-05-25 | 白凯 | 24h |
| 57 | 8.4.3 | 服务和服务实例接口开发 | 1d | 2017-06-04 | 2017-06-05 | 56 |  |  |  | 0d | start no earlier than 2017-05-25 | 白凯 | 8h |
| 56 | 8.4.4 | 服务和服务实例接口定义 | 2d | 2017-05-31 | 2017-06-02 |  |  |  |  | 0d | start no earlier than 2017-05-25 | 白凯 | 16h |
| 55 | 8.5 | 服务管理功能开发 | 10d | 2017-05-31 | 2017-06-14 |  | 2017-05-31 | 2017-06-14 | 10d | 0d | start no earlier than 2017-05-24 |  | 80h |
| 54 | 9 | **服务端开发－橘云多租户管理平台** | 18d | 2017-05-31 | 2017-06-26 |  | 2017-05-31 | 2017-06-28 | 20d | 0d | start no earlier than 2017-05-31 |  | 392h |
| 53 | 9.1 | **角色列表获取API调用** | 2d | 2017-06-20 | 2017-06-22 | 52 |  |  |  | 0d | start no earlier than 2017-05-25 | 贾双喜 | 16h |
| 52 | 9.1.1 | 角色列表页面开发 | 3d | 2017-06-15 | 2017-06-20 |  |  |  |  | 0d | start no earlier than 2017-05-25 | 贾双喜 | 24h |

| ID | WBS | Task | Type | Duration | Start | Finish | Predecessors | Baseline start | Baseline finish | Baseline duration | Total slack | Constraint | Resources | Work |
| --- | --- | --- | --- | --- | --- | --- | --- | --- | --- | --- | --- | --- | --- | --- |
| 51 | 9.2 | **角色管理页面开发** |  | 5d | 2017-06-15 | 2017-06-22 | 37 | 2017-06-21 | 2017-06-28 | 5d | 0d | start no earlier than 2017-05-24 |  | 40h |
| 50 | 9.2.1 | RabbitMQ服务添加页面增强 | milestone | 0d | 2017-06-15 | 2017-06-15 | 49 |  |  |  | 0d | start no earlier than 2017-05-25 | 贾双喜 |  |
| 49 | 9.2.2 | Neo4j服务添加页面增强 | milestone | 0d | 2017-06-15 | 2017-06-15 | 48 |  |  |  | 0d | start no earlier than 2017-05-25 | 贾双喜 |  |
| 48 | 9.2.3 | MongoDB服务添加页面增强 | milestone | 0d | 2017-06-15 | 2017-06-15 | 47 |  |  |  | 0d | start no earlier than 2017-05-25 | 贾双喜 |  |
| 47 | 9.2.4 | GreenPlum服务添加页面增强 | milestone | 0d | 2017-06-15 | 2017-06-15 | 46 |  |  |  | 0d | start no earlier than 2017-05-25 | 贾双喜 |  |
| 46 | 9.2.5 | Oracle服务添加页面增强 | milestone | 0d | 2017-06-15 | 2017-06-15 | 45 |  |  |  | 0d | start no earlier than 2017-05-25 |  |  |
| 45 | 9.2.6 | Kafka服务添加页面增强 |  | 1d | 2017-06-14 | 2017-06-15 | 44 |  |  |  | 0d | start no earlier than 2017-05-25 | 贾双喜 | 8h |
| 44 | 9.2.7 | HBase服务添加页面增强 |  | 1d | 2017-06-13 | 2017-06-14 | 43 |  |  |  | 0d | start no earlier than 2017-05-25 | 贾双喜 | 8h |
| 43 | 9.2.8 | Hive服务添加页面增强 |  | 1d | 2017-06-12 | 2017-06-13 | 42 |  |  |  | 0d | start no earlier than 2017-05-25 | 贾双喜 | 8h |
| 42 | 9.2.9 | YARN服务添加页面增强 |  | 1d | 2017-06-11 | 2017-06-12 | 41 |  |  |  | 0d | start no earlier than 2017-05-25 | 贾双喜 | 8h |
| 41 | 9.2.10 | HDFS服务添加页面增强 |  | 1d | 2017-06-08 | 2017-06-09 | 40 |  |  |  | 0d | start no earlier than 2017-05-25 | 贾双喜 | 8h |
| 40 | 9.2.11 | 服务添加页面框架开发 |  | 1d | 2017-06-07 | 2017-06-08 | 39 |  |  |  | 0d | start no earlier than 2017-05-25 | 贾双喜 | 8h |
| 39 | 9.2.12 | 服务列表页面与后端集成 |  | 1d | 2017-06-06 | 2017-06-07 | 38 |  |  |  | 0d | start no earlier than 2017-05-25 | 贾双喜 | 8h |
| 38 | 9.2.13 | 服务列表页面开发 |  | 4d | 2017-05-31 | 2017-06-06 |  |  |  |  | 0d | start no earlier than 2017-05-25 | 贾双喜 | 32h |
| 37 | 9.3 | **服务管理页面开发** |  | 11d | 2017-05-31 | 2017-06-15 |  | 2017-05-31 | 2017-06-21 | 15d | 0d | start no earlier than 2017-05-24 |  | 88h |
| 36 | 9.3.1 | 租户包涵的服务展示 |  | 4d | 2017-06-26 | 2017-06-30 | 35 |  |  |  | 0d | start no earlier than 2017-05-25 | 敬晓阳 | 32h |
| 35 | 9.3.2 | 租户基本信息展示 |  | 3d | 2017-06-21 | 2017-06-26 |  |  |  |  | 0d | start no earlier than 2017-05-25 | 敬晓阳 | 24h |
| 34 | 9.4 | **租户基本信息页面开发** |  | 7d | 2017-06-21 | 2017-06-30 | 12 | 2017-06-21 | 2017-06-28 | 5d | 0d | start no earlier than 2017-05-24 |  | 56h |
| 33 | 9.4.1 | 租户授权时获取云用户中心用户列表功能开发 |  | 2d | 2017-06-12 | 2017-06-14 | 32 |  |  |  | 0d | start no earlier than 2017-05-25 | 张宁 | 16h |
| 32 | 9.4.2 | 租户授权页面开发 |  | 4d | 2017-06-06 | 2017-06-12 | 31 |  |  |  | 0d | start no earlier than 2017-05-25 | 张宁 | 32h |
| 31 | 9.4.3 | 租户用户列表页面开发 |  | 4d | 2017-05-31 | 2017-06-06 |  |  |  |  | 0d | start no earlier than 2017-05-25 | 张宁 | 32h |
| 30 | 9.5 | **租户角色管理，分配页面开发** |  | 10d | 2017-05-31 | 2017-06-14 |  | 2017-05-31 | 2017-06-14 | 10d | 0d | start no earlier than 2017-05-24 |  | 80h |
| 29 | 9.5.1 | 租户级的RabbitMQ资源使用信息获取 |  | 1d | 2017-06-28 | 2017-06-29 | 28 |  |  |  | 0d | start no earlier than 2017-05-25 | 江彤 | 8h |
| 28 | 9.5.2 | 租户级的Neo4j资源使用信息获取 |  | 2d | 2017-06-26 | 2017-06-28 | 27 |  |  |  | 0d | start no earlier than 2017-05-25 | 江彤 | 16h |
| 27 | 9.5.3 | 租户级的MongoDB资源使用信息获取 |  | 1d | 2017-06-25 | 2017-06-26 | 26 |  |  |  | 0d | start no earlier than 2017-05-25 | 江彤 | 8h |
| 26 | 9.5.4 | 租户级的GreenPlum 资源使用信息获取 |  | 2d | 2017-06-21 | 2017-06-23 | 25 |  |  |  | 0d | start no earlier than 2017-05-25 | 江彤 | 16h |
| 25 | 9.5.5 | 租户级的Oracle资源使用信息获取 | milestone | 0d | 2017-06-21 | 2017-06-21 | 24 |  |  |  | 0d | start no earlier than 2017-05-25 | 江彤 |  |
| 24 | 9.5.6 | 租户级的Kafka资源使用信息获取 |  | 2d | 2017-06-19 | 2017-06-21 | 23 |  |  |  | 0d | start no earlier than 2017-05-25 | 江彤 | 16h |
| 23 | 9.5.7 | 租户级的HBase资源使用信息获取 |  | 1d | 2017-06-18 | 2017-06-19 | 22 |  |  |  | 0d | start no earlier than 2017-05-25 | 江彤 | 8h |
| 22 | 9.5.8 | 租户级的Hive资源使用信息获取 |  | 2d | 2017-06-14 | 2017-06-16 | 21 |  |  |  | 0d | start no earlier than 2017-05-25 | 江彤 | 16h |
| 21 | 9.5.9 | 租户级的YARN资源使用信息获取 |  | 1d | 2017-06-13 | 2017-06-14 | 20 |  |  |  | 0d | start no earlier than 2017-05-25 | 江彤 | 8h |
| 20 | 9.5.10 | 租户级的HDFS资源使用信息获取 |  | 2d | 2017-06-11 | 2017-06-13 |  |  |  |  | 0d | start no earlier than 2017-05-25 | 江彤 | 16h |

| ID | WBS | Task | Duration | Start | Finish | Predecessors | Baseline start | Baseline finish | Baseline duration | Total slack | Constraint | Resources | Work |
| --- | --- | --- | --- | --- | --- | --- | --- | --- | --- | --- | --- | --- | --- |
| 19 | 9.6 | **租户资源使用情况监控页面开发** | 14d | 2017-06-11 | 2017-06-29 | 2 | 2017-06-07 | 2017-06-28 | 15d | 0d | start no earlier than 2017-05-24 |  | 112h |
| 18 | 9.6.1 | 第三方服务运维平台接入 | 3d | 2017-06-18 | 2017-06-21 | 17 |  |  |  | 0d | start no earlier than 2017-05-25 | 敬晓阳 | 24h |
| 17 | 9.6.2 | 第三方服务运维平台梳理 | 2d | 2017-06-14 | 2017-06-16 | 16 |  |  |  | 0d | start no earlier than 2017-05-25 | 敬晓阳 | 16h |
| 16 | 9.6.3 | 运维管理平台页面接入 | 1d | 2017-06-13 | 2017-06-14 | 15 |  |  |  | 0d | start no earlier than 2017-05-25 | 敬晓阳 | 8h |
| 15 | 9.6.4 | 多租户平台管理页面接入 | 2d | 2017-06-11 | 2017-06-13 | 14 |  |  |  | 0d | start no earlier than 2017-05-25 | 敬晓阳 | 16h |
| 14 | 9.6.5 | 统一管控平台页面开发 | 4d | 2017-06-05 | 2017-06-09 | 13 |  |  |  | 0d | start no earlier than 2017-05-25 | 敬晓阳 | 32h |
| 13 | 9.6.6 | 统一管控平台页面设计 | 3d | 2017-05-31 | 2017-06-05 |  |  |  |  | 0d | start no earlier than 2017-05-25 | 敬晓阳 | 24h |
| 12 | 9.7 | **统一管控平台开发** | 15d | 2017-05-31 | 2017-06-21 |  | 2017-05-31 | 2017-06-21 | 15d | 0d | start no earlier than 2017-05-24 |  | 120h |
| 11 | 9.7.1 | 与单点登录服务的集成 | 1d | 2017-06-11 | 2017-06-12 | 10 |  |  |  | 0d | start no earlier than 2017-05-25 | 虞里杉 | 8h |
| 10 | 9.7.2 | 初始化一个系统管理员用户 | 1d | 2017-06-08 | 2017-06-09 | 9 |  |  |  | 0d | start no earlier than 2017-05-25 | 虞里杉 | 8h |
| 9 | 9.7.3 | 租户管理页面前端开发框架准备 | 2d | 2017-06-06 | 2017-06-08 | 8 |  |  |  | 0d | start no earlier than 2017-05-25 | 虞里杉 | 16h |
| 8 | 9.7.4 | 租户管理页面顶级导航栏功能开发 | 4d | 2017-05-31 | 2017-06-06 |  |  |  |  | 0d | start no earlier than 2017-05-25 | 虞里杉 | 32h |
| 7 | 9.8 | **租户管理页面框架开发** | 8d | 2017-05-31 | 2017-06-12 |  | 2017-05-31 | 2017-06-14 | 10d | 0d | start no earlier than 2017-05-24 |  | 64h |
| 6 | 9.8.1 | 橘云Ambari运维平台从统一管控页面无密码登录 | 2d | 2017-06-07 | 2017-06-09 | 5 |  |  |  | 0d | start no earlier than 2017-05-25 | 江彤 | 16h |
| 5 | 9.8.2 | 橘云多租户管理从统一管控平台无密码登录 | 2d | 2017-06-05 | 2017-06-07 | 4 |  |  |  | 0d | start no earlier than 2017-05-25 | 江彤 | 16h |
| 4 | 9.8.3 | 信云智控制台跳转到统一管控界面 | 1d | 2017-06-04 | 2017-06-05 | 3 |  |  |  | 0d | start no earlier than 2017-05-25 | 江彤 | 8h |
| 3 | 9.8.4 | 调用中信云用户中心登录认证接口 | 2d | 2017-05-31 | 2017-06-02 |  |  |  |  | 0d | start no earlier than 2017-05-25 | 江彤 | 16h |
| 2 | 9.9 | 单点登录功能开发 | 7d | 2017-05-31 | 2017-06-09 |  | 2017-05-31 | 2017-06-07 | 5d | 0d | start no earlier than 2017-05-24 |  | 56h |
| 1 | 10 | 前端开发－橘云多租户管理平台 | 22d | 2017-05-31 | 2017-06-30 |  | 2017-05-31 | 2017-06-28 | 20d | 0d | start no earlier than 2017-05-31 |  | 616h |
