Schedule from OmniPlan.
Project start 2017-05-24

## Resources

| Resource | Group |
| --- | --- |
| 资源 1 | staff |
| 设备 1 | equipment |
| 素材 1 | material |
| 群组 1 | group |
| OCDP研发1 | staff |
| OCDP研发2 | staff |
| OCDP研发3 | staff |
| OCDP研发4 | staff |
| OCDF研发1 | staff |
| OCDF研发2 | staff |
| OCDF研发3 | staff |
| OCDF研发4 | staff |
| 橘云北京研发1 | staff |
| 橘云北京研发2 | staff |
| 橘云北京研发3 | staff |
| 橘云北京研发4 | staff |
| 现场研发1 | staff |
| 现场研发2 | staff |
| 现场研发3 | staff |
| OCDP研发5 | staff |
| 现场研发4 | staff |

## Schedule

| ID | WBS | Task | Predecessors | Constraint | Resources | Work |
| --- | --- | --- | --- | --- | --- | --- |
| 1 | 1 | **前端开发－橘云多租户管理平台** |  | start no earlier than 2017-06-01 |  |  |
| 2 | 1.1 | 单点登录功能开发 |  | start no earlier than 2017-05-25 | 橘云北京研发1 | 40h |
| 3 | 1.2 | 租户管理页面框架开发 |  | start no earlier than 2017-05-25 | OCDP研发5 | 80h |
| 4 | 1.3 | 租户创建，服务资源配置页面开发 |  | start no earlier than 2017-05-25 | 橘云北京研发2 | 120h |
| 5 | 1.4 | 租户资源使用情况监控页面开发 | 2 | start no earlier than 2017-05-25 | 橘云北京研发1 | 120h |
| 6 | 1.5 | 租户角色管理，分配页面开发 |  | start no earlier than 2017-05-25 | 橘云北京研发3 | 80h |
| 7 | 1.6 | 租户基本信息页面开发 | 4 | start no earlier than 2017-05-25 | 橘云北京研发2 | 40h |
| 8 | 1.7 | 用户管理页面开发 | 6 | start no earlier than 2017-05-25 | 橘云北京研发3 | 80h |
| 9 | 1.8 | 服务管理页面开发 |  | start no earlier than 2017-05-25 | 橘云北京研发4 | 120h |
| 10 | 1.9 | 角色管理页面开发 | 9 | start no earlier than 2017-05-25 | 橘云北京研发4 | 40h |
| 11 | 2 | **服务端开发－橘云多租户管理平台** |  | start no earlier than 2017-06-01 |  |  |
| 12 | 2.1 | 服务管理功能开发 |  | start no earlier than 2017-05-25 | OCDP研发3 | 80h |
| 13 | 2.2 | 用户接入功能开发 |  | start no earlier than 2017-05-25 | 现场研发2 | 80h |
| 14 | 2.3 | 权限管理功能开发 | 13 | start no earlier than 2017-05-25 | 现场研发2 | 80h |
| 15 | 2.4 | 租户管理功能开发 |  | start no earlier than 2017-05-25 | OCDP研发4 | 120h |
| 16 | 2.5 | 服务端配置管理，框架开发 | 3 | start no earlier than 2017-05-25 | OCDP研发5 | 80h |
| 17 | 3 | **服务适配器开发** |  |  |  |  |
| 18 | 3.1 | HDFS服务及服务实例开发 |  | start no earlier than 2017-06-01 | OCDP研发1 | 80h |
| 19 | 3.2 | YARN服务及服务实例开发 | 18 | start no earlier than 2017-06-01 | OCDP研发1 | 80h |
| 20 | 3.3 | HBase服务及服务实例开发 |  | start no earlier than 2017-06-01 | OCDP研发2 | 80h |
| 21 | 3.4 | Hive服务及服务实例开发 | 20 | start no earlier than 2017-06-01 | OCDP研发2 | 80h |
| 22 | 3.5 | Kafka服务及服务实例开发 | 12 | start no earlier than 2017-06-01 | OCDP研发3 | 80h |
| 23 | 3.6 | Oracle服务及服务实例开发 |  | start no earlier than 2017-06-01 | 现场研发1 | 160h |
| 24 | 3.7 | GreenPlum 服务及服务实例开发 |  | start no earlier than 2017-06-01 | OCDF研发3 | 160h |
| 25 | 3.8 | MongoDB服务及服务实例开发 |  | start no earlier than 2017-06-01 | OCDF研发4 | 160h |
| 26 | 3.9 | Neo4j服务及服务实例开发 |  | start no earlier than 2017-06-01 | OCDF研发1 | 160h |
| 27 | 3.10 | RabbitMQ服务及服务实例开发 |  | start no earlier than 2017-06-01 | OCDF研发2 | 160h |
| 28 | 4 | 与DACP调用接口开发 |  | start no earlier than 2017-06-01 | 现场研发3 | 40h |

| ID | WBS | Task | Predecessors | Constraint | Resources | Work |
| --- | --- | --- | --- | --- | --- | --- |
| 29 | 5 | **与信云智交互过程开发** |  | start no earlier than 2017-06-01 |  |  |
| 30 | 5.1 | 租户扩容审批页面开发 |  | start no earlier than 2017-05-25 | 现场研发4 | 40h |
| 31 | 5.2 | 租户审批提醒功能开发 | 30 | start no earlier than 2017-05-25 | 现场研发4 | 80h |
| 32 | 5.3 | 与信云智的调用集成 | 28 | start no earlier than 2017-05-25 | 现场研发3 | 40h |
| 33 | 6 | **集成测试** |  | start no earlier than 2017-05-25 |  |  |
| 34 | 6.1 | 与DACP集成测试 |  | start no earlier than 2017-06-01 |  | 40h |
| 35 | 6.2 | 与信云智集成测试 |  | start no earlier than 2017-06-01 |  | 40h |
| 36 | 6.3 | 与云用户中心集成测试 |  | start no earlier than 2017-06-01 |  | 40h |
| 37 | 6.4 | 与大数据平台集成测试 |  | start no earlier than 2017-06-01 |  | 40h |
| 38 | 6.5 | 与云计算平台集成测试 |  | start no earlier than 2017-06-01 |  | 40h |
